# 仿真公路项目

Schedule from Primavera P6, 2026-01-05 to 2027-03-10, data date 2026-05-03, A marks actual dates.

## Schedule

| ID | WBS | Activity | Type | Duration | Start | Finish | Predecessors | Complete | Remaining | Planned start | Planned finish | Total float |
| --- | --- | --- | --- | --- | --- | --- | --- | --- | --- | --- | --- | --- |
| MS123 |  | 主线基层完成 | milestone | 0d | 2026-12-06 | 2026-12-06 | PAV002 |  |  | 2026-11-30 | 2026-11-30 | 0d |
| MS121 |  | 中桥结构完成 | milestone | 0d | 2026-12-26 | 2026-12-26 | MBR004, MBR008 |  |  | 2026-12-20 | 2026-12-20 | 0d |
| MS122 |  | 全线交安完成 | milestone | 0d | 2027-03-10 | 2027-03-10 | TRF004, TRF008 |  |  | 2027-03-04 | 2027-03-04 | 0d |
|  | CUL | **涵洞** |  |  | 2026-02-02 | 2026-11-08 |  |  |  |  |  |  |
| CUL001 |  | 箱涵 C01 基底及垫层 |  | 232.29d | 2026-02-02 A | 2026-10-31 |  | 33% | 155.55d |  |  | 15d |
| CUL005 |  | 箱涵 C02 基底及垫层 |  | 232.29d | 2026-02-04 A | 2026-11-02 |  | 33% | 156.09d |  |  | 19d |
| CUL009 |  | 箱涵 C03 基底及垫层 |  | 232.29d | 2026-02-06 A | 2026-11-04 |  | 33% | 155.81d |  |  | 23d |
| CUL013 |  | 箱涵 C04 基底及垫层 |  | 232.29d | 2026-02-08 A | 2026-11-06 |  | 33% | 156.76d |  |  | 13d |
| CUL017 |  | 箱涵 C05 基底及垫层 |  | 232.29d | 2026-02-10 A | 2026-11-08 |  | 32% | 156.88d |  |  | 17d |
| CUL002 |  | 箱涵 C01 涵身混凝土 |  | 219.43d | 2026-02-17 A | 2026-10-31 | CUL001 SS+15d | 27% | 160.53d |  |  | 16d |
| CUL006 |  | 箱涵 C02 涵身混凝土 |  | 219.43d | 2026-02-19 A | 2026-11-02 | CUL005 SS+15d | 26% | 161.52d |  |  | 20d |
| CUL010 |  | 箱涵 C03 涵身混凝土 |  | 219.43d | 2026-02-21 A | 2026-11-04 | CUL009 SS+15d | 26% | 161.61d |  |  | 10d |
| CUL014 |  | 箱涵 C04 涵身混凝土 |  | 219.43d | 2026-02-23 A | 2026-11-06 | CUL013 SS+15d | 26% | 162.16d |  |  | 14d |
| CUL018 |  | 箱涵 C05 涵身混凝土 |  | 219.43d | 2026-02-25 A | 2026-11-08 | CUL017 SS+15d | 26% | 163.29d |  |  | 18d |
| CUL003 |  | 箱涵 C01 翼墙及洞口 |  | 206.57d | 2026-03-04 A | 2026-10-31 | CUL002 SS+15d | 20% | 164.26d |  |  | 17d |
| CUL007 |  | 箱涵 C02 翼墙及洞口 |  | 206.57d | 2026-03-06 A | 2026-11-02 | CUL006 SS+15d | 20% | 165.27d |  |  | 21d |
| CUL011 |  | 箱涵 C03 翼墙及洞口 |  | 206.57d | 2026-03-08 A | 2026-11-04 | CUL010 SS+15d | 20% | 166.03d |  |  | 11d |
| CUL015 |  | 箱涵 C04 翼墙及洞口 |  | 206.57d | 2026-03-10 A | 2026-11-06 | CUL014 SS+15d | 19% | 166.35d |  |  | 15d |
| CUL019 |  | 箱涵 C05 翼墙及洞口 |  | 206.57d | 2026-03-12 A | 2026-11-08 | CUL018 SS+15d | 19% | 167.9d |  |  | 19d |
| CUL004 |  | 箱涵 C01 涵背及防护 |  | 193.71d | 2026-03-19 A | 2026-10-31 | CUL003 SS+15d | 14% | 166.61d |  |  | 18d |
| CUL008 |  | 箱涵 C02 涵背及防护 |  | 193.71d | 2026-03-21 A | 2026-11-02 | CUL007 SS+15d | 14% | 167.51d |  |  | 22d |
| CUL012 |  | 箱涵 C03 涵背及防护 |  | 193.71d | 2026-03-23 A | 2026-11-04 | CUL011 SS+15d | 13% | 168.72d |  |  | 12d |
| CUL016 |  | 箱涵 C04 涵背及防护 |  | 193.71d | 2026-03-25 A | 2026-11-06 | CUL015 SS+15d | 13% | 169.35d |  |  | 16d |
| CUL020 |  | 箱涵 C05 涵背及防护 |  | 193.71d | 2026-03-27 A | 2026-11-08 | CUL019 SS+15d | 12% | 170.84d |  |  | 20d |

| ID | WBS | Activity | Duration | Start | Finish | Predecessors | Complete | Remaining | Planned start | Planned finish | Total float |
| --- | --- | --- | --- | --- | --- | --- | --- | --- | --- | --- | --- |
|  | EAR | **路基** |  | 2026-01-05 | 2026-11-19 |  |  |  |  |  |  |
| EAR001 |  | K00+000—K02+000 挖方及整形 | 262.29d | 2026-01-05 A | 2026-11-11 |  | 44% | 147.78d | 2026-01-05 | 2026-11-07 | -4d |
| EAR005 |  | K02+000—K04+000 挖方及整形 | 262.29d | 2026-01-07 A | 2026-11-13 |  | 44% | 147.96d | 2026-01-07 | 2026-11-09 | -4d |
| EAR009 |  | K04+000—K06+000 挖方及整形 | 262.29d | 2026-01-09 A | 2026-11-15 |  | 44% | 147.1d | 2026-01-09 | 2026-11-11 | -4d |
| EAR013 |  | K06+000—K08+000 挖方及整形 | 262.29d | 2026-01-11 A | 2026-11-17 |  | 44% | 147.71d | 2026-01-11 | 2026-11-13 | -4d |
| EAR002 |  | K00+000—K02+000 选料填筑 | 256.29d | 2026-01-12 A | 2026-11-11 | EAR001 SS+7d | 40% | 155.04d | 2026-01-12 | 2026-11-07 | -4d |
| EAR017 |  | K08+000—K10+000 挖方及整形 | 262.29d | 2026-01-13 A | 2026-11-19 |  | 44% | 147.9d | 2026-01-13 | 2026-11-15 | -4d |
| EAR006 |  | K02+000—K04+000 选料填筑 | 256.29d | 2026-01-14 A | 2026-11-13 | EAR005 SS+7d | 39% | 155.68d | 2026-01-14 | 2026-11-09 | -4d |
| EAR010 |  | K04+000—K06+000 选料填筑 | 256.29d | 2026-01-16 A | 2026-11-15 | EAR009 SS+7d | 39% | 155.07d | 2026-01-16 | 2026-11-11 | -4d |
| EAR014 |  | K06+000—K08+000 选料填筑 | 256.29d | 2026-01-18 A | 2026-11-17 | EAR013 SS+7d | 40% | 154.91d | 2026-01-18 | 2026-11-13 | -4d |
| EAR003 |  | K00+000—K02+000 软基换填 | 250.29d | 2026-01-19 A | 2026-11-11 | EAR002 SS+7d | 35% | 161.88d | 2026-01-19 | 2026-11-07 | -4d |
| EAR018 |  | K08+000—K10+000 选料填筑 | 256.29d | 2026-01-20 A | 2026-11-19 | EAR017 SS+7d | 39% | 155.42d | 2026-01-20 | 2026-11-15 | -4d |
| EAR007 |  | K02+000—K04+000 软基换填 | 250.29d | 2026-01-21 A | 2026-11-13 | EAR006 SS+7d | 35% | 162.14d | 2026-01-21 | 2026-11-09 | -4d |
| EAR011 |  | K04+000—K06+000 软基换填 | 250.29d | 2026-01-23 A | 2026-11-15 | EAR010 SS+7d | 35% | 162.21d | 2026-01-23 | 2026-11-11 | -4d |
| EAR015 |  | K06+000—K08+000 软基换填 | 250.29d | 2026-01-25 A | 2026-11-17 | EAR014 SS+7d | 35% | 161.67d | 2026-01-25 | 2026-11-13 | -4d |
| EAR004 |  | K00+000—K02+000 边坡及排水 | 244.29d | 2026-01-26 A | 2026-11-11 | EAR003 SS+7d | 31% | 168.03d | 2026-01-26 | 2026-11-07 | -4d |
| EAR019 |  | K08+000—K10+000 软基换填 | 250.29d | 2026-01-27 A | 2026-11-19 | EAR018 SS+7d | 35% | 162.36d | 2026-01-27 | 2026-11-15 | -4d |
| EAR008 |  | K02+000—K04+000 边坡及排水 | 244.29d | 2026-01-28 A | 2026-11-13 | EAR007 SS+7d | 31% | 167.81d | 2026-01-28 | 2026-11-09 | -4d |
| EAR012 |  | K04+000—K06+000 边坡及排水 | 244.29d | 2026-01-30 A | 2026-11-15 | EAR011 SS+7d | 31% | 168.47d | 2026-01-30 | 2026-11-11 | -4d |
| EAR016 |  | K06+000—K08+000 边坡及排水 | 244.29d | 2026-02-01 A | 2026-11-17 | EAR015 SS+7d | 31% | 168.01d | 2026-02-01 | 2026-11-13 | -4d |
| EAR020 |  | K08+000—K10+000 边坡及排水 | 244.29d | 2026-02-03 A | 2026-11-19 | EAR019 SS+7d | 31% | 168.1d | 2026-02-03 | 2026-11-15 | -4d |
|  | MBR | **中桥** |  | 2026-01-26 | 2026-12-24 |  |  |  |  |  |  |
| MBR001 |  | 中桥 K6+450 钻孔灌注桩 | 274.29d | 2026-01-26 A | 2026-12-16 |  | 40% | 164.1d | 2026-01-26 | 2026-12-12 | 17d |
| MBR005 |  | 中桥 K6+450 钻孔灌注桩 | 272.57d | 2026-01-30 A | 2026-12-18 |  | 38% | 167.82d | 2026-01-30 | 2026-12-14 | 21d |
| MBR009 |  | 中桥 K6+450 钻孔灌注桩 | 270.86d | 2026-02-03 A | 2026-12-20 |  | 37% | 170.12d | 2026-02-03 | 2026-12-16 | 11d |
| MBR013 |  | 中桥 K6+450 钻孔灌注桩 | 269.14d | 2026-02-07 A | 2026-12-22 |  | 35% | 174.14d | 2026-02-07 | 2026-12-18 | 15d |
| MBR017 |  | 中桥 K6+450 钻孔灌注桩 | 267.43d | 2026-02-11 A | 2026-12-24 |  | 34% | 177.16d | 2026-02-11 | 2026-12-20 | 19d |
| MBR002 |  | 中桥 K6+450 承台及系梁 | 244.29d | 2026-03-02 A | 2026-12-16 | MBR001 SS+35d | 27% | 179.18d | 2026-03-02 | 2026-12-12 | 18d |
| MBR006 |  | 中桥 K6+450 承台及系梁 | 242.57d | 2026-03-06 A | 2026-12-18 | MBR005 SS+35d | 24% | 183.26d | 2026-03-06 | 2026-12-14 | 22d |
| MBR010 |  | 中桥 K6+450 承台及系梁 | 240.86d | 2026-03-10 A | 2026-12-20 | MBR009 SS+35d | 23% | 185.82d | 2026-03-10 | 2026-12-16 | 12d |
| MBR014 |  | 中桥 K6+450 承台及系梁 | 239.14d | 2026-03-14 A | 2026-12-22 | MBR013 SS+35d | 21% | 189.31d | 2026-03-14 | 2026-12-18 | 16d |
| MBR018 |  | 中桥 K6+450 承台及系梁 | 237.43d | 2026-03-18 A | 2026-12-24 | MBR017 SS+35d | 19% | 193.14d | 2026-03-18 | 2026-12-20 | 20d |
| MBR003 |  | 中桥 K6+450 墩台及盖梁 | 208.29d | 2026-04-13 A | 2026-12-16 | MBR002 SS+42d | 5% | 197.5d | 2026-04-13 | 2026-12-12 | 19d |
| MBR007 |  | 中桥 K6+450 墩台及盖梁 | 206.57d | 2026-04-17 A | 2026-12-18 | MBR006 SS+42d | 4% | 198.96d | 2026-04-17 | 2026-12-14 | 23d |
| MBR011 |  | 中桥 K6+450 墩台及盖梁 | 204.86d | 2026-04-21 A | 2026-12-20 | MBR010 SS+42d | 3% | 199.57d | 2026-04-21 | 2026-12-16 | 13d |
| MBR015 |  | 中桥 K6+450 墩台及盖梁 | 203.14d | 2026-04-25 A | 2026-12-22 | MBR014 SS+42d | 2% | 199.91d | 2026-04-25 | 2026-12-18 | 17d |
| MBR019 |  | 中桥 K6+450 墩台及盖梁 | 201.43d | 2026-04-29 A | 2026-12-24 | MBR018 SS+42d | 1% | 200.14d | 2026-04-29 | 2026-12-20 | 21d |
| MBR004 |  | 中桥 K6+450 预制梁及桥面 | 124.29d | 2026-07-20 | 2026-12-16 | MBR003 SS+98d |  |  | 2026-07-20 | 2026-12-12 | 20d |
| MBR008 |  | 中桥 K6+450 预制梁及桥面 | 122.57d | 2026-07-24 | 2026-12-18 | MBR007 SS+98d |  |  | 2026-07-24 | 2026-12-14 | 10d |
| MBR012 |  | 中桥 K6+450 预制梁及桥面 | 120.86d | 2026-07-28 | 2026-12-20 | MBR011 SS+98d |  |  | 2026-07-28 | 2026-12-16 | 14d |
| MBR016 |  | 中桥 K6+450 预制梁及桥面 | 119.14d | 2026-08-01 | 2026-12-22 | MBR015 SS+98d |  |  | 2026-08-01 | 2026-12-18 | 18d |
| MBR020 |  | 中桥 K6+450 预制梁及桥面 | 117.43d | 2026-08-05 | 2026-12-24 | MBR019 SS+98d |  |  | 2026-08-05 | 2026-12-20 | 22d |

| ID | WBS | Activity | Duration | Start | Finish | Predecessors | Complete | Remaining | Planned start | Planned finish | Total float |
| --- | --- | --- | --- | --- | --- | --- | --- | --- | --- | --- | --- |
|  | PAV | **路面** |  | 2026-06-15 | 2027-02-18 |  |  |  |  |  |  |
| PAV001 |  | K00+000—K02+000 级配碎石底基层 | 202.29d | 2026-06-15 | 2027-02-10 | EAR001 SS+160d |  |  | 2026-06-15 | 2027-02-06 | 21d |
| PAV005 |  | K02+000—K04+000 级配碎石底基层 | 201.43d | 2026-06-18 | 2027-02-12 | EAR005 SS+160d |  |  | 2026-06-18 | 2027-02-08 | 11d |
| PAV009 |  | K04+000—K06+000 级配碎石底基层 | 200.57d | 2026-06-21 | 2027-02-14 | EAR009 SS+160d |  |  | 2026-06-21 | 2027-02-10 | 15d |
| PAV013 |  | K06+000—K08+000 级配碎石底基层 | 199.71d | 2026-06-24 | 2027-02-16 | EAR013 SS+160d |  |  | 2026-06-24 | 2027-02-12 | 19d |
| PAV017 |  | K08+000—K10+000 级配碎石底基层 | 198.86d | 2026-06-27 | 2027-02-18 | EAR017 SS+160d |  |  | 2026-06-27 | 2027-02-14 | 23d |
| PAV002 |  | K00+000—K02+000 水稳基层 | 172.29d | 2026-07-20 | 2027-02-10 | PAV001 SS+35d, EAR002 SS+160d |  |  | 2026-07-20 | 2027-02-06 | 22d |
| PAV006 |  | K02+000—K04+000 水稳基层 | 171.43d | 2026-07-23 | 2027-02-12 | PAV005 SS+35d, EAR006 SS+160d |  |  | 2026-07-23 | 2027-02-08 | 12d |
| PAV010 |  | K04+000—K06+000 水稳基层 | 170.57d | 2026-07-26 | 2027-02-14 | PAV009 SS+35d, EAR010 SS+160d |  |  | 2026-07-26 | 2027-02-10 | 16d |
| PAV014 |  | K06+000—K08+000 水稳基层 | 169.71d | 2026-07-29 | 2027-02-16 | PAV013 SS+35d, EAR014 SS+160d |  |  | 2026-07-29 | 2027-02-12 | 20d |
| PAV018 |  | K08+000—K10+000 水稳基层 | 168.86d | 2026-08-01 | 2027-02-18 | PAV017 SS+35d, EAR018 SS+160d |  |  | 2026-08-01 | 2027-02-14 | 10d |
| PAV003 |  | K00+000—K02+000 沥青下面层 | 130.29d | 2026-09-07 | 2027-02-10 | PAV002 SS+49d, EAR003 SS+160d |  |  | 2026-09-07 | 2027-02-06 | 23d |
| PAV007 |  | K02+000—K04+000 沥青下面层 | 129.43d | 2026-09-10 | 2027-02-12 | PAV006 SS+49d, EAR007 SS+160d |  |  | 2026-09-10 | 2027-02-08 | 13d |
| PAV011 |  | K04+000—K06+000 沥青下面层 | 128.57d | 2026-09-13 | 2027-02-14 | PAV010 SS+49d, EAR011 SS+160d |  |  | 2026-09-13 | 2027-02-10 | 17d |
| PAV015 |  | K06+000—K08+000 沥青下面层 | 127.71d | 2026-09-16 | 2027-02-16 | PAV014 SS+49d, EAR015 SS+160d |  |  | 2026-09-16 | 2027-02-12 | 21d |
| PAV019 |  | K08+000—K10+000 沥青下面层 | 126.86d | 2026-09-19 | 2027-02-18 | PAV018 SS+49d, EAR019 SS+160d |  |  | 2026-09-19 | 2027-02-14 | 11d |
| PAV004 |  | K00+000—K02+000 沥青上面层 | 82.29d | 2026-11-02 | 2027-02-10 | PAV003 SS+56d, EAR004 SS+160d |  |  | 2026-11-02 | 2027-02-06 | 10d |
| PAV008 |  | K02+000—K04+000 沥青上面层 | 81.43d | 2026-11-05 | 2027-02-12 | PAV007 SS+56d, EAR008 SS+160d |  |  | 2026-11-05 | 2027-02-08 | 14d |
| PAV012 |  | K04+000—K06+000 沥青上面层 | 80.57d | 2026-11-08 | 2027-02-14 | PAV011 SS+56d, EAR012 SS+160d |  |  | 2026-11-08 | 2027-02-10 | 18d |
| PAV016 |  | K06+000—K08+000 沥青上面层 | 79.71d | 2026-11-11 | 2027-02-16 | PAV015 SS+56d, EAR016 SS+160d |  |  | 2026-11-11 | 2027-02-12 | 22d |
| PAV020 |  | K08+000—K10+000 沥青上面层 | 78.86d | 2026-11-14 | 2027-02-18 | PAV019 SS+56d, EAR020 SS+160d |  |  | 2026-11-14 | 2027-02-14 | 12d |
|  | SBR | **小桥** |  | 2026-01-12 | 2026-09-13 |  |  |  |  |  |  |
| SBR001 |  | 小桥 K2+180 扩大基础 | 202.29d | 2026-01-12 A | 2026-09-05 |  | 43% | 115.55d |  |  | 23d |
| SBR005 |  | 小桥 K2+180 扩大基础 | 202.29d | 2026-01-14 A | 2026-09-07 |  | 43% | 115.83d |  |  | 13d |
| SBR009 |  | 小桥 K2+180 扩大基础 | 202.29d | 2026-01-16 A | 2026-09-09 |  | 43% | 115.19d |  |  | 17d |
| SBR013 |  | 小桥 K2+180 扩大基础 | 202.29d | 2026-01-18 A | 2026-09-11 |  | 42% | 116.75d |  |  | 21d |
| SBR017 |  | 小桥 K2+180 扩大基础 | 202.29d | 2026-01-20 A | 2026-09-13 |  | 42% | 117.77d |  |  | 11d |
| SBR002 |  | 小桥 K2+180 桥台及背墙 | 189.43d | 2026-01-27 A | 2026-09-05 | SBR001 SS+15d | 39% | 115.37d |  |  | 10d |
| SBR006 |  | 小桥 K2+180 桥台及背墙 | 189.43d | 2026-01-29 A | 2026-09-07 | SBR005 SS+15d | 39% | 116.24d |  |  | 14d |
| SBR010 |  | 小桥 K2+180 桥台及背墙 | 189.43d | 2026-01-31 A | 2026-09-09 | SBR009 SS+15d | 39% | 116.08d |  |  | 18d |
| SBR014 |  | 小桥 K2+180 桥台及背墙 | 189.43d | 2026-02-02 A | 2026-09-11 | SBR013 SS+15d | 38% | 117.04d |  |  | 22d |
| SBR018 |  | 小桥 K2+180 桥台及背墙 | 189.43d | 2026-02-04 A | 2026-09-13 | SBR017 SS+15d | 37% | 118.71d |  |  | 12d |
| SBR003 |  | 小桥 K2+180 盖板及桥面 | 176.57d | 2026-02-11 A | 2026-09-05 | SBR002 SS+15d | 35% | 115.55d |  |  | 11d |
| SBR007 |  | 小桥 K2+180 盖板及桥面 | 176.57d | 2026-02-13 A | 2026-09-07 | SBR006 SS+15d | 34% | 116.42d |  |  | 15d |
| SBR011 |  | 小桥 K2+180 盖板及桥面 | 176.57d | 2026-02-15 A | 2026-09-09 | SBR010 SS+15d | 34% | 117.11d |  |  | 19d |
| SBR015 |  | 小桥 K2+180 盖板及桥面 | 176.57d | 2026-02-17 A | 2026-09-11 | SBR014 SS+15d | 33% | 117.74d |  |  | 23d |
| SBR019 |  | 小桥 K2+180 盖板及桥面 | 176.57d | 2026-02-19 A | 2026-09-13 | SBR018 SS+15d | 32% | 119.55d |  |  | 13d |
| SBR004 |  | 小桥 K2+180 台背回填 | 163.71d | 2026-02-26 A | 2026-09-05 | SBR003 SS+15d | 29% | 116.11d |  |  | 12d |
| SBR008 |  | 小桥 K2+180 台背回填 | 163.71d | 2026-02-28 A | 2026-09-07 | SBR007 SS+15d | 29% | 116.66d |  |  | 16d |
| SBR012 |  | 小桥 K2+180 台背回填 | 163.71d | 2026-03-02 A | 2026-09-09 | SBR011 SS+15d | 28% | 117.9d |  |  | 20d |
| SBR016 |  | 小桥 K2+180 台背回填 | 163.71d | 2026-03-04 A | 2026-09-11 | SBR015 SS+15d | 27% | 118.84d |  |  | 10d |
| SBR020 |  | 小桥 K2+180 台背回填 | 163.71d | 2026-03-06 A | 2026-09-13 | SBR019 SS+15d | 26% | 120.42d |  |  | 14d |

| ID | WBS | Activity | Duration | Start | Finish | Predecessors | Total float |
| --- | --- | --- | --- | --- | --- | --- | --- |
|  | TRF | **交安** |  | 2026-09-14 | 2027-03-04 |  |  |
| TRF001 |  | K00+000—K02+000 护栏及端头 | 139.71d | 2026-09-14 | 2027-02-24 | PAV001 SS+90d | 13d |
| TRF005 |  | K02+000—K04+000 护栏及端头 | 139.71d | 2026-09-16 | 2027-02-26 | PAV005 SS+90d | 17d |
| TRF009 |  | K04+000—K06+000 护栏及端头 | 139.71d | 2026-09-18 | 2027-02-28 | PAV009 SS+90d | 21d |
| TRF013 |  | K06+000—K08+000 护栏及端头 | 139.71d | 2026-09-20 | 2027-03-02 | PAV013 SS+90d | 11d |
| TRF017 |  | K08+000—K10+000 护栏及端头 | 139.71d | 2026-09-22 | 2027-03-04 | PAV017 SS+90d | 15d |
| TRF002 |  | K00+000—K02+000 标志及立柱 | 121.71d | 2026-10-05 | 2027-02-24 | TRF001 SS+21d, PAV002 SS+90d | 14d |
| TRF006 |  | K02+000—K04+000 标志及立柱 | 121.71d | 2026-10-07 | 2027-02-26 | TRF005 SS+21d, PAV006 SS+90d | 18d |
| TRF010 |  | K04+000—K06+000 标志及立柱 | 121.71d | 2026-10-09 | 2027-02-28 | TRF009 SS+21d, PAV010 SS+90d | 22d |
| TRF014 |  | K06+000—K08+000 标志及立柱 | 121.71d | 2026-10-11 | 2027-03-02 | TRF013 SS+21d, PAV014 SS+90d | 12d |
| TRF018 |  | K08+000—K10+000 标志及立柱 | 121.71d | 2026-10-13 | 2027-03-04 | TRF017 SS+21d, PAV018 SS+90d | 16d |
| TRF003 |  | K00+000—K02+000 标线及道钉 | 103.71d | 2026-10-26 | 2027-02-24 | TRF002 SS+21d, PAV003 SS+90d | 15d |
| TRF007 |  | K02+000—K04+000 标线及道钉 | 103.71d | 2026-10-28 | 2027-02-26 | TRF006 SS+21d, PAV007 SS+90d | 19d |
| TRF011 |  | K04+000—K06+000 标线及道钉 | 103.71d | 2026-10-30 | 2027-02-28 | TRF010 SS+21d, PAV011 SS+90d | 23d |
| TRF015 |  | K06+000—K08+000 标线及道钉 | 103.71d | 2026-11-01 | 2027-03-02 | TRF014 SS+21d, PAV015 SS+90d | 13d |
| TRF019 |  | K08+000—K10+000 标线及道钉 | 103.71d | 2026-11-03 | 2027-03-04 | TRF018 SS+21d, PAV019 SS+90d | 17d |
| TRF004 |  | K00+000—K02+000 隔离及导改 | 85.71d | 2026-11-16 | 2027-02-24 | TRF003 SS+21d, PAV004 SS+90d | 16d |
| TRF008 |  | K02+000—K04+000 隔离及导改 | 85.71d | 2026-11-18 | 2027-02-26 | TRF007 SS+21d, PAV008 SS+90d | 20d |
| TRF012 |  | K04+000—K06+000 隔离及导改 | 85.71d | 2026-11-20 | 2027-02-28 | TRF011 SS+21d, PAV012 SS+90d | 10d |
| TRF016 |  | K06+000—K08+000 隔离及导改 | 85.71d | 2026-11-22 | 2027-03-02 | TRF015 SS+21d, PAV016 SS+90d | 14d |
| TRF020 |  | K08+000—K10+000 隔离及导改 | 85.71d | 2026-11-24 | 2027-03-04 | TRF019 SS+21d, PAV020 SS+90d | 18d |
